# caGrid-1-3

Schedule from MS Project, 2008-07-17 to 2008-07-28, A marks actual dates.
Personal

## Calendars

- Standard: Mon-Fri 08:00-12:00, 13:00-17:00; Sat-Sun off.

## Resources

| Resource |
| --- |
| Scott Oster |
| Steve Langella |
| Shannon Hastings |
| David Ervin |
| Santhosh Garmilla |
| Kunal Modi |
| John Eisenschmidt |

## Schedule

| ID | WBS | Task | Type | Duration | Start | Finish | Predecessors | Total slack | Free slack |
| --- | --- | --- | --- | --- | --- | --- | --- | --- | --- |
| 1 | 1.0 | **Gold Compatibility** |  | 1d? | 2008-07-17 | 2008-07-17 |  | 6d |  |
| 2 | 1.1 | **GME Rewrite** |  | 1d? | 2008-07-17 | 2008-07-17 |  | 6d |  |
| 3 | 1.1.0 | Start | milestone | 0d | 2008-07-17 | 2008-07-17 |  | 6d | 0d |
| 4 | 1.1.1 | MySQL 5.0 Support |  | 1d? | 2008-07-17 | 2008-07-17 | 3 | 6d | 0d |
| 5 | 1.1.3 | Schemas with Cycles |  | 1d? | 2008-07-17 | 2008-07-17 | 3 | 6d | 0d |
| 6 | 1.1.4 | Schemas with Includes/Redefines |  | 1d? | 2008-07-17 | 2008-07-17 | 3 | 6d | 0d |
| 7 | 1.1.5 | URI Valid as Namespace |  | 1d? | 2008-07-17 | 2008-07-17 | 3 | 6d | 0d |
| 8 | 1.1.6 | Metadata and WSDL reflect service operations |  | 1d? | 2008-07-17 | 2008-07-17 | 3 | 6d | 0d |
| 9 | 1.1.7 | Update/Delete non-production schemas |  | 1d? | 2008-07-17 | 2008-07-17 | 3 | 6d | 0d |
| 10 | 1.1.8 | Associate Arbitrarty Metadata or Annotations |  | 1d? | 2008-07-17 | 2008-07-17 | 3 | 6d | 0d |
| 11 | 1.1.9 | Validate that XML conforms to schema in GME |  | 1d? | 2008-07-17 | 2008-07-17 | 3 | 6d | 0d |
| 12 | 1.1.10 | Non-RFE Development |  | 1d? | 2008-07-17 | 2008-07-17 | 3 | 6d | 0d |
| 13 | 1.1.11 | Finish | milestone | 0d | 2008-07-17 | 2008-07-17 | 4, 5, 6, 7, 8, 9, 10, 11, 12 | 6d | 0d |
| 14 | 1.2 | **caDSR Grid Service Replacement** |  | 1d? | 2008-07-17 | 2008-07-17 |  | 6d |  |
| 15 | 1.2.1 | Start | milestone | 0d | 2008-07-17 | 2008-07-17 |  | 6d | 0d |
| 16 | 1.2.2 | Design |  | 1d? | 2008-07-17 | 2008-07-17 | 15 | 6d | 0d |
| 17 | 1.2.3 | Development |  | 1d? | 2008-07-17 | 2008-07-17 | 15 | 6d | 0d |
| 18 | 1.2.4 | Developer Testing |  | 1d? | 2008-07-17 | 2008-07-17 | 15 | 6d | 0d |
| 19 | 1.2.5 | Finish | milestone | 0d | 2008-07-17 | 2008-07-17 | 16, 17, 18 | 6d | 0d |
| 20 | 1.3 | **Make Core Services Gold Compatible** |  | 1d? | 2008-07-17 | 2008-07-17 |  | 7d |  |
| 21 | 1.3.1 | Start | milestone | 0d | 2008-07-17 | 2008-07-17 |  | 7d | 0d |
| 22 | 1.3.2 | Identify Services to be made Gold Compatible |  | 1d? | 2008-07-17 | 2008-07-17 | 21 | 7d | 0d |
| 23 | 1.3.3 | Make Services Gold Compatible |  | 1d? | 2008-07-17 | 2008-07-17 | 21 | 7d | 0d |
| 24 | 1.3.4 | Finish | milestone | 0d | 2008-07-17 | 2008-07-17 | 22, 23 | 7d |  |

| ID | WBS | Task | Type | Duration | Start | Finish | Predecessors | Total slack | Free slack |
| --- | --- | --- | --- | --- | --- | --- | --- | --- | --- |
| 25 | 1.4 | **Grid-based Policy Enforcement** |  | 1d? | 2008-07-17 | 2008-07-17 |  | 7d |  |
| 26 | 1.4.1 | Start | milestone | 0d | 2008-07-17 | 2008-07-17 |  | 7d | 0d |
| 27 | 1.4.2 | Determine Policy to be enforced |  | 1d? | 2008-07-17 | 2008-07-17 | 26 | 7d | 0d |
| 28 | 1.4.3 | Design |  | 1d? | 2008-07-17 | 2008-07-17 | 26 | 7d | 0d |
| 29 | 1.4.4 | Development |  | 1d? | 2008-07-17 | 2008-07-17 | 26 | 7d | 0d |
| 30 | 1.4.5 | End | milestone | 0d | 2008-07-17 | 2008-07-17 | 29, 27, 28 | 7d |  |
| 31 | 2.0 | **caCORE Integration** |  | 1d? | 2008-07-17 | 2008-07-17 |  | 7d |  |
| 32 | 2.1 | Start | milestone | 0d | 2008-07-17 | 2008-07-17 |  | 7d | 0d |
| 33 | 2.2 | Implementation of Common Testing between Grid and SDK |  | 1d? | 2008-07-17 | 2008-07-17 | 32 | 7d | 0d |
| 34 | 2.3 | Identify modeling gaps/requirements for the analytical/data service |  | 1d? | 2008-07-17 | 2008-07-17 | 32 | 7d | 0d |
| 35 | 2.4 | CQL/CQL2 Integration in SDK |  | 1d? | 2008-07-17 | 2008-07-17 | 32 | 7d | 0d |
| 36 | 2.5 | Data Service plug-in for SDK 4.1 |  | 1d? | 2008-07-17 | 2008-07-17 | 32 | 7d | 0d |
| 37 | 2.6 | Introduce upgrade to SDK 4.1 |  | 1d? | 2008-07-17 | 2008-07-17 | 32 | 7d | 0d |
| 38 | 2.7 | Proxy Framework and XML serialization integration in Grid Service |  | 1d? | 2008-07-17 | 2008-07-17 | 32 | 7d | 0d |
| 39 | 2.8 | XMI Reader API Integration in Introduce |  | 1d? | 2008-07-17 | 2008-07-17 | 32 | 7d | 0d |
| 40 | 2.9 | GME Namespace implementation in SDK |  | 1d? | 2008-07-17 | 2008-07-17 | 32 | 7d | 0d |
| 41 | 2.10 | Finish | milestone | 0d | 2008-07-17 | 2008-07-17 | 33, 34, 35, 40, 36, 37, 38, 39 | 7d |  |
| 42 | 3.0 | **Bug Fixes** |  | 1d? | 2008-07-17 | 2008-07-17 |  | 7d |  |
| 43 | 3.1 | Start | milestone | 0d | 2008-07-17 | 2008-07-17 |  | 7d | 0d |
| 44 | 3.2 | SDK 4 data service wizard fails with 'No Domain Model' |  | 1d? | 2008-07-17 | 2008-07-17 | 43 | 7d | 0d |
| 45 | 3.3 | When the trasfer resource is being destroyed it tries to delete the cache file. If the cache files does not exist it throws a resource exception. |  | 1d? | 2008-07-17 | 2008-07-17 | 43 | 7d | 0d |
| 46 | 3.4 | 2 >= 2 error in GridGrouper my groups |  | 1d? | 2008-07-17 | 2008-07-17 | 43 | 7d | 0d |
| 47 | 3.5 | Introduce is not passing any system properties on to it's ant calls it makes when running the engine. |  | 1d? | 2008-07-17 | 2008-07-17 | 43 | 7d | 0d |
| 48 | 3.6 | caDSR Grid Service API does not provide access to semantic metadata (concept codes) |  | 1d? | 2008-07-17 | 2008-07-17 | 43 | 7d | 0d |
| 49 | 3.7 | Security Service Metadata Anonymous Clients Ignored in Grid Grouper |  | 1d? | 2008-07-17 | 2008-07-17 | 43 | 7d | 0d |
| 50 | 3.8 | caCORE backed data services don't handle queries with single quotes in query parameters |  | 1d? | 2008-07-17 | 2008-07-17 | 43 | 7d | 0d |
| 51 | 3.9 | caDSR Type Browser doesn't let you correct a namespace that is invalid (as opposed to not found) |  | 1d? | 2008-07-17 | 2008-07-17 | 43 | 7d | 0d |
| 52 | 3.10 | DataService gets in inconsistent state and returns confusing errors when not properly initialized |  | 1d? | 2008-07-17 | 2008-07-17 | 43 | 7d | 0d |
| 53 | 3.11 | Grid Grouper Authorization not configured but service can be deployed |  | 1d? | 2008-07-17 | 2008-07-17 | 43 | 7d | 0d |
| 54 | 3.12 | Introduce error importing Type schemas it generated. |  | 1d? | 2008-07-17 | 2008-07-17 | 43 | 7d | 0d |
| 55 | 3.13 | GTS does not remove permissions when a CA is deleted. |  | 1d? | 2008-07-17 | 2008-07-17 | 43 | 7d | 0d |
| 56 | 3.14 | Spaces in GLOBUS_LOCATION causing errors on deployment for Introduce created services |  | 1d? | 2008-07-17 | 2008-07-17 | 43 | 7d | 0d |
| 57 | 3.15 | When importing a method from another introduce service package names are broken |  | 1d? | 2008-07-17 | 2008-07-17 | 43 | 7d | 0d |
| 58 | 3.16 | SyncGTS is an Introduce 1.1 service will conflict with a container running newer services. |  | 1d? | 2008-07-17 | 2008-07-17 | 43 | 7d | 0d |
| 59 | 3.17 | Lowercase chars in complexType names from schema can cause compile failure |  | 1d? | 2008-07-17 | 2008-07-17 | 43 | 7d | 0d |
| 60 | 3.18 | caGrid authentication service authentications fail after change of password on NCI LDAP |  | 1d? | 2008-07-17 | 2008-07-17 | 43 | 7d | 0d |
| 61 | 3.19 | SyncGTS is using log4j directly instead of commons logging which causes some logging statements to not be shown in Tomcat |  | 1d? | 2008-07-17 | 2008-07-17 | 43 | 7d | 0d |
| 62 | 3.20 | Remove references to log4j in projects and only use commons logging |  | 1d? | 2008-07-17 | 2008-07-17 | 43 | 7d | 0d |
| 63 | 3.21 | SDK 4 data service wizard fails with 'No Domain Model' |  | 1d? | 2008-07-17 | 2008-07-17 | 43 | 7d | 0d |
| 64 | 3.22 | Introduce error importing Type schemas it generated. |  | 1d? | 2008-07-17 | 2008-07-17 | 43 | 7d | 0d |
| 65 | 3.23 | Multiple services using WS-Enumeration cannot run in same container |  | 1d? | 2008-07-17 | 2008-07-17 | 43 | 7d | 0d |
| 66 | 3.24 | Introduce configure types validator lets you save when there are validation errors |  | 1d? | 2008-07-17 | 2008-07-17 | 43 | 7d | 0d |
| 67 | 3.25 | Subject in Dorian limited to 255 characters |  | 1d? | 2008-07-17 | 2008-07-17 | 43 | 7d | 0d |
| 68 | 3.26 | Introduce Log Viewer hangs in certain scenarios |  | 1d? | 2008-07-17 | 2008-07-17 | 43 | 7d | 0d |
| 69 | 3.27 | Finish | milestone | 0d | 2008-07-17 | 2008-07-17 | 44, 45, 46, 47, 48, 49, 50, 51, 52, 53, 54, 55, 56, 57, 58, 59, 60, 61, 62, 63, 64, 65, 66, 67, 68 | 7d |  |

| ID | WBS | Task | Type | Duration | Start | Finish | Predecessors | Complete | Remaining | Total slack | Free slack |
| --- | --- | --- | --- | --- | --- | --- | --- | --- | --- | --- | --- |
| 70 | 4.0 | **WebSSO** |  | 1d? | 2008-07-17 A | 2008-07-17 |  | 42% | 0.58d? | 6d |  |
| 71 | 4.1 | Start | milestone | 0d | 2008-07-17 | 2008-07-17 |  |  |  | 6d | 0d |
| 72 | 4.2 | Properties not set for service redirect/cookie age within the cas-servlet.xml file |  | 1d? | 2008-07-17 A | 2008-07-17 A | 71 | 100% |  |  |  |
| 73 | 4.3 | CaGridWebSSOAttributeLoaderFilter will not work as designed |  | 1d? | 2008-07-17 A | 2008-07-17 A | 71 | 100% |  |  |  |
| 74 | 4.4 | WebSSO project is missing jar dependencies for syncGTS |  | 1d? | 2008-07-17 A | 2008-07-17 A | 71 | 100% |  |  |  |
| 75 | 4.5 | classnotfoundexception when deploying to tomcat 5.5+ |  | 1d? | 2008-07-17 A | 2008-07-17 A | 71 | 100% |  |  |  |
| 76 | 4.6 | Update Build Process |  | 1d? | 2008-07-17 | 2008-07-17 | 71 |  |  | 6d | 0d |
| 77 | 4.7 | Update the Sample Application |  | 1d? | 2008-07-17 | 2008-07-17 | 71 |  |  | 6d | 0d |
| 78 | 4.8 | Create an Installer |  | 1d? | 2008-07-17 | 2008-07-17 | 71 |  |  | 6d | 0d |
| 79 | 4.9 | Author System Tests for WebSSO |  | 1d? | 2008-07-17 | 2008-07-17 | 71 |  |  | 6d | 0d |
| 80 | 4.10 | Acegi client |  | 1d? | 2008-07-17 | 2008-07-17 | 71 |  |  | 6d | 0d |
| 81 | 4.11 | Single sign-out |  | 1d? | 2008-07-17 A | 2008-07-17 A | 71 | 100% |  |  |  |
| 82 | 4.12 | Support out-of-box integration with Liferay (caGrid Portal 2.x) |  | 1d? | 2008-07-17 | 2008-07-17 | 71 |  |  | 6d | 0d |
| 83 | 4.13 | Enhance existing documentation |  | 1d? | 2008-07-17 | 2008-07-17 | 71 |  |  | 6d | 0d |
| 84 | 4.14 | Finish | milestone | 0d | 2008-07-17 | 2008-07-17 | 73, 74, 75, 76, 77, 78, 79, 80, 81, 82, 83, 72 |  |  | 6d | 0d |
| 85 | 5.0 | **Continuous Integration** |  | 1d? | 2008-07-17 | 2008-07-17 |  |  |  | 6d |  |
| 86 | 5.1 | Start | milestone | 0d | 2008-07-17 | 2008-07-17 |  |  |  | 6d | 0d |
| 87 | 5.3 | Support common technology stack for caGrid infrastructure |  | 1d? | 2008-07-17 | 2008-07-17 | 86 |  |  | 7d | 0d |
| 88 | 5.3 | Replace cvs with subversion |  | 1d? | 2008-07-17 | 2008-07-17 | 86 |  |  | 6d | 0d |
| 89 | 5.4 | Common caBIG Ivy Repository |  | 1d? | 2008-07-17 | 2008-07-17 | 86 |  |  | 7d | 0d |
| 90 | 5.5 | Remove old EVS grid service |  | 1d? | 2008-07-17 | 2008-07-17 | 86 |  |  | 7d | 0d |
| 91 | 5.6 | Remove old caDSR grid service |  | 1d? | 2008-07-17 | 2008-07-17 | 86 |  |  | 7d | 0d |
| 92 | 5.7 | Finish | milestone | 0d | 2008-07-17 | 2008-07-17 | 87, 88, 91, 89, 90 |  |  | 7d |  |
| 93 | 6.0 | **Data Services** |  | 1d? | 2008-07-17 | 2008-07-17 |  |  |  | 6d |  |
| 94 | 6.1 | Start | milestone | 0d | 2008-07-17 | 2008-07-17 |  |  |  | 6d | 0d |
| 95 | 6.2 | CQL/CQL2 Integration in SDK |  | 1d? | 2008-07-17 | 2008-07-17 | 94 |  |  | 6d | 0d |
| 96 | 6.3 | FQP should support delegation |  | 1d? | 2008-07-17 | 2008-07-17 | 94 |  |  | 6d | 0d |
| 97 | 6.4 | FQP should support BDT transfer of results |  | 1d? | 2008-07-17 | 2008-07-17 | 94 |  |  | 6d | 0d |
| 98 | 6.5 | FQP should support ws-notification |  | 1d? | 2008-07-17 | 2008-07-17 | 94 |  |  | 6d | 0d |
| 99 | 6.6 | DCQL (FQP) should support query modifiers |  | 1d? | 2008-07-17 | 2008-07-17 | 94 |  |  | 6d | 0d |
| 100 | 6.7 | Add additional utilities for working with query results |  | 1d? | 2008-07-17 | 2008-07-17 | 94 |  |  | 6d | 0d |
| 101 | 6.8 | silent exceptions (no service properties from custom query processor) when adding a custom query processor using Introduce data extension |  | 1d? | 2008-07-17 | 2008-07-17 | 94 |  |  | 6d | 0d |
| 102 | 6.9 | End | milestone | 0d | 2008-07-17 | 2008-07-17 | 95, 96, 97, 98, 99, 100, 101 |  |  | 6d | 0d |

| ID | WBS | Task | Type | Duration | Start | Finish | Predecessors | Total slack | Free slack |
| --- | --- | --- | --- | --- | --- | --- | --- | --- | --- |
| 103 | 7.0 | **Introduce** |  | 1d? | 2008-07-17 | 2008-07-17 |  | 0d |  |
| 104 | 7.1 | Start | milestone | 0d | 2008-07-17 | 2008-07-17 |  | 0d |  |
| 105 | 7.2 | Grid Grouper Introduce Authorization Extension |  | 1d? | 2008-07-17 | 2008-07-17 | 104 | 0d |  |
| 106 | 7.3 | ivy support for introduce-created projects |  | 1d? | 2008-07-17 | 2008-07-17 | 104 | 0d |  |
| 107 | 7.4 | Terminology Metadata Service Extension |  | 1d? | 2008-07-17 | 2008-07-17 | 104 | 0d |  |
| 108 | 7.2 | Need a way to hook in pre-deployment validation checks to enforce policy |  | 1d? | 2008-07-17 | 2008-07-17 | 104 | 0d |  |
| 109 | 7.6 | Change the way schemas are loaded and resolved by introduce. |  | 1d? | 2008-07-17 | 2008-07-17 | 104 | 0d |  |
| 110 | 7.7 | Introduce extension for creating cagrid core services |  | 1d? | 2008-07-17 | 2008-07-17 | 104 | 0d |  |
| 111 | 7.8 | Introduce Software Update needs re-engineered |  | 1d? | 2008-07-17 | 2008-07-17 | 104 | 0d |  |
| 112 | 7.9 | Improve Introduce usability when adding extensions or service contexts |  | 1d? | 2008-07-17 | 2008-07-17 | 104 | 0d |  |
| 113 | 7.10 | Introduce services which support persistence are hard to customize persistence on the resource itself |  | 1d? | 2008-07-17 | 2008-07-17 | 104 | 0d |  |
| 114 | 7.11 | Introduce client code should be more override friendly |  | 1d? | 2008-07-17 | 2008-07-17 | 104 | 0d |  |
| 115 | 7.12 | Introduce clients do not set user credential when returning client handle to stateful resources |  | 1d? | 2008-07-17 | 2008-07-17 | 104 | 0d |  |
| 116 | 7.13 | Introduce Service tab should use tooltips in the jtree |  | 1d? | 2008-07-17 | 2008-07-17 | 104 | 7d |  |
| 117 | 7.14 | Finish | milestone | 0d | 2008-07-17 | 2008-07-17 | 109, 110, 111, 112, 113, 114, 115, 105, 106, 108, 107 | 0d |  |
| 118 | 8.0 | **Security** |  | 1d? | 2008-07-17 | 2008-07-17 |  | 6d |  |
| 119 | 8.1 | Start | milestone | 0d | 2008-07-17 | 2008-07-17 |  | 6d | 0d |
| 120 | 8.2 | Support multiple authentication profile |  | 1d? | 2008-07-17 | 2008-07-17 | 119 | 6d | 0d |
| 121 | 8.3 | Authentication Profile Service Metadata |  | 1d? | 2008-07-17 | 2008-07-17 | 119 | 6d | 0d |
| 122 | 8.4 | Update GAARDS UI to leverage new Authentication Profile / Trusted IdP metadata |  | 1d? | 2008-07-17 | 2008-07-17 | 119 | 6d | 0d |
| 123 | 8.5 | Develop system integration tests for the Authentication Service |  | 1d? | 2008-07-17 | 2008-07-17 | 119 | 6d | 0d |
| 124 | 8.6 | End | milestone | 0d | 2008-07-17 | 2008-07-17 | 120, 121, 122, 123 | 6d | 0d |
| 125 | 9.0 | **Incubation** |  | 1d? | 2008-07-17 | 2008-07-17 |  | 6d |  |
| 126 | 9.1 | Start | milestone | 0d | 2008-07-17 | 2008-07-17 |  | 6d | 0d |
| 127 | 9.2 | WSRF.NET (support) |  | 1d? | 2008-07-17 | 2008-07-17 | 126 | 6d | 0d |
| 128 | 9.2 | Identifiers (support) |  | 1d? | 2008-07-17 | 2008-07-17 | 126 | 6d | 0d |
| 129 | 9.3 | Metrics Service |  | 1d? | 2008-07-17 | 2008-07-17 | 126 | 6d | 0d |
| 130 | 9.0 | End | milestone | 0d | 2008-07-17 | 2008-07-17 | 127, 128, 129 | 7d |  |

| ID | WBS | Task | Type | Duration | Start | Finish | Predecessors | Total slack | Free slack |
| --- | --- | --- | --- | --- | --- | --- | --- | --- | --- |
| 131 | 10.0 | **Documentation** |  | 1d? | 2008-07-17 | 2008-07-17 |  | 7d |  |
| 132 | 10.1 | Start | milestone | 0d | 2008-07-17 | 2008-07-17 |  | 7d | 0d |
| 133 | 10.2 | Update Administrator Guide |  | 1d? | 2008-07-17 | 2008-07-17 | 132 | 7d | 0d |
| 134 | 10.3 | Update Install Guide |  | 1d? | 2008-07-17 | 2008-07-17 | 132 | 7d | 0d |
| 135 | 10.4 | Update User Guide |  | 1d? | 2008-07-17 | 2008-07-17 | 132 | 7d | 0d |
| 136 | 10.5 | Finish | milestone | 0d | 2008-07-17 | 2008-07-17 | 133, 134, 135 | 7d |  |
| 137 | 11.0 | **Quality Assurance** |  | 3d? | 2008-07-17 | 2008-07-21 |  | 5d |  |
| 138 | 11.1 | Start | milestone | 0d | 2008-07-17 | 2008-07-17 |  | 7d | 1d |
| 139 | 11.2 | Test GME |  | 1d? | 2008-07-18 | 2008-07-18 | 138, 13 | 6d |  |
| 140 | 11.3 | Test caDSR Replacement |  | 1d? | 2008-07-18 | 2008-07-18 | 138, 19 | 6d |  |
| 141 | 11.4 | Test WebSSO |  | 1d? | 2008-07-18 | 2008-07-18 | 138, 84 | 6d |  |
| 142 | 11.5 | Test release on new tech stack |  | 1d? | 2008-07-18 | 2008-07-18 | 138, 88 | 6d |  |
| 143 | 11.6 | Test Introduce |  | 1d? | 2008-07-18 | 2008-07-18 | 138, 117 | 6d |  |
| 144 | 11.7 | Test Security |  | 1d? | 2008-07-18 | 2008-07-18 | 138, 124 | 6d |  |
| 145 | 11.8 | Test WSRF.NET |  | 1d? | 2008-07-18 | 2008-07-18 | 138, 127 | 6d |  |
| 146 | 11.9 | Test Identifiers |  | 1d? | 2008-07-18 | 2008-07-18 | 138, 128 | 6d |  |
| 147 | 11.10 | Test Metrics |  | 1d? | 2008-07-18 | 2008-07-18 | 138, 129 | 6d |  |
| 148 | 11.11 | Test Data Services |  | 1d? | 2008-07-18 | 2008-07-18 | 138, 102 | 6d |  |
| 149 | 11.12 | Test caGrid 1.3 Grid Services |  | 1d? | 2008-07-21 | 2008-07-21 | 138, 153 | 5d | 0d |
| 150 | 11.13 | Finish | milestone | 0d | 2008-07-21 | 2008-07-21 | 149 | 5d |  |
| 151 | 12.0 | **Deployment** |  | 8d? | 2008-07-17 | 2008-07-28 |  | 0d |  |
| 152 | 12.1 | Start | milestone | 0d | 2008-07-17 | 2008-07-17 |  | 1d | 0d |
| 153 | 12.2 | Regenerate core caGrid Services using Introduce 1.3 |  | 1d? | 2008-07-18 | 2008-07-18 | 152, 117 | 0d |  |
| 154 | 12.3 | Write Deployment Instructions |  | 1d? | 2008-07-17 | 2008-07-17 | 152 | 1d |  |
| 155 | 12.4 | Workflow Service in Release |  | 1d? | 2008-07-17 | 2008-07-17 | 152 | 1d |  |
| 156 | 12.5 | Portal in Release |  | 1d? | 2008-07-17 | 2008-07-17 | 152 | 7d |  |
| 157 | 12.6 | Create Release |  | 1d? | 2008-07-21 | 2008-07-21 | 152, 153, 154, 155 | 0d |  |
| 158 | 12.7 | Package Release into Installer |  | 1d? | 2008-07-22 | 2008-07-22 | 157 | 0d |  |
| 159 | 12.8 | Redeploy QA Grid |  | 1d? | 2008-07-23 | 2008-07-23 | 158 | 0d |  |
| 160 | 12.9 | Redeploy Training Grid |  | 1d? | 2008-07-23 | 2008-07-23 | 158 | 3d |  |
| 161 | 12.10 | Redeploy Staging Grid |  | 1d? | 2008-07-24 | 2008-07-24 | 159 | 0d |  |
| 162 | 12.11 | Redeploy Production Grid |  | 1d? | 2008-07-25 | 2008-07-25 | 161 | 0d |  |
| 163 | 12.12 | Update Zope / Plome |  | 1d? | 2008-07-22 | 2008-07-22 | 157 | 4d |  |
| 164 | 12.13 | Update gforge |  | 1d? | 2008-07-22 | 2008-07-22 | 157 | 4d |  |
| 165 | 12.14 | Send Release Announcement |  | 1d? | 2008-07-28 | 2008-07-28 | 162 | 0d |  |
| 166 | 12.15 | Finish | milestone | 0d | 2008-07-28 | 2008-07-28 | 153, 154, 155, 156, 157, 158, 159, 160, 161, 162, 163, 164, 165 | 0d |  |
